# USP Projekat 2018

Schedule from MS Project, 2018-07-02 to 2021-07-01.
AGEDIS - Advanced Garbage Evidention and DIsposal System
Elektrotehnički fakultet u Beogradu
Projekat koji modernizuje sistem bacanja đubreta i evidencije plaćenih računa

## Calendars

- Standard: Mon-Fri 08:00-12:00, 13:00-17:00; Sat-Sun off. Exceptions (off unless hours are given): 2018-12-30 to 2019-12-30 (Nova Godina, recurring), 2019-01-08 to 2021-01-08 (Božić, recurring).

## Resources

| Resource | Group | Unit | Rate |
| --- | --- | --- | --- |
| BMU - Menadžeri | BMU |  | 35 |
| BMU - Istraživači | BMU |  | 26.75 |
| BMU - Tehničko osoblje | BMU |  | 20.25 |
| BMU - Administrativno osoblje | BMU |  | 16.38 |
| Vaisala - Menadžeri | Vaisala |  | 35 |
| Vaisala - Istraživači | Vaisala |  | 26.75 |
| Vaisala - Tehničko osoblje | Vaisala |  | 20.25 |
| Vaisala - Administrativno osoblje | Vaisala |  | 16.38 |
| SR - Menadžeri | Swedish Recycling |  | 36.75 |
| SR - Istraživači | Swedish Recycling |  | 30.13 |
| SR - Tehničko osoblje | Swedish Recycling |  | 23.75 |
| SR - Administrativno osoblje | Swedish Recycling |  | 19.63 |
| Xebia - Menadžeri | Xebia |  | 36.75 |
| Xebia - Istraživači | Xebia |  | 30.13 |
| Xebia - Tehničko osoblje | Xebia |  | 23.75 |
| Xebia - Administrativno osoblje | Xebia |  | 19.63 |
| ETF - Menadžeri | Elektortehnički fakultet |  | 13.5 |
| ETF - Istraživači | Elektortehnički fakultet |  | 10 |
| ETF - Tehničko osoblje | Elektortehnički fakultet |  | 7.13 |
| ETF - Administrativno osoblje | Elektortehnički fakultet |  | 5.63 |
| Licenca za softver za generisanje statistike | Licenca | licenca | 1666.67 |
| Licenca za softver za modelovanje aplikacije | Licenca | licenca | 1666.67 |
| Licenca za softver za testiranje | Licenca | licenca | 833.33 |
| Server sale |  |  | 50000 |
| Modemi za pametne kante |  |  | 75000 |
| Senzori za pametne kante |  |  | 50000 |
| Reklamni materijal |  |  | 16666.7 |
| Ulaznice za konferencije |  |  | 833.33 |
| Materijali za podršku klijenata |  |  | 333.33 |
| Eksterna verifikacija modela sistema |  |  |  |
| Licenca za Microsoft Project | Licenca | licenca | 1800 |
| Proizvodnja pametnih kanti |  |  |  |
| Reklamni video materijali |  |  |  |

## Schedule

| ID | WBS | Task | Type | Duration | Start | Finish | Predecessors | Total slack | Constraint |
| --- | --- | --- | --- | --- | --- | --- | --- | --- | --- |
| 1 | 1 | WP1 - Analiza tržišta i korisničkih zahteva | manual | 88d | 2018-07-02 | 2018-10-31 |  |  | finish no earlier than 2018-10-31 |
| 2 | 2 | Prekretnica - Završena analiza zahteva i tržišta | milestone, manual | 0d | 2018-11-01 | 2018-11-01 | 1 |  |  |
| 3 | 3 | **WP2 - Planiranje projekta** |  | 65d | 2018-11-01 | 2019-01-31 | 1 |  |  |
| 4 | 3.1 | Planiranje budžeta |  | 65d | 2018-11-01 | 2019-01-31 | 5FF, 6FF | 0d |  |
| 5 | 3.2 | Planiranje resursa |  | 40d | 2018-11-01 | 2018-12-26 |  | 0d |  |
| 6 | 3.3 | Planiranje rizika |  | 40d | 2018-11-01 | 2018-12-26 |  | 0d |  |
| 7 | 3.4 | Raspodela posla po participantima |  | 35d | 2018-11-01 | 2018-12-19 |  | 0d |  |
| 8 | 3.5 | Određivanje aktivnosti unutar svih faza projekta |  | 30d | 2018-12-20 | 2019-01-31 | 7 | 0d |  |
| 9 | 3.6 | Određivanje mere kvaliteta i postupaka | manual | 25d | 2018-12-27 | 2019-01-31 | 5, 6 |  |  |
| 10 | 3.7 | Određivanje načina komunikacije | manual | 25d | 2018-12-27 | 2019-01-31 | 5, 6 |  |  |
| 11 | 4 | Prekretnica - Završen plan projekta | milestone, manual | 0d | 2019-02-01 | 2019-02-01 | 3 |  |  |
| 12 | 5 | **WP3 - Modelovanje i dizajn** |  | 106d | 2019-02-01 | 2019-06-28 | 3 |  |  |
| 13 | 5.1 | **Modelovanje i dizajn veb-portala** |  | 106d | 2019-02-01 | 2019-06-28 |  | 0d |  |
| 14 | 5.1.1 | Izrada dijagrama slučajeva korišćenja |  | 30d | 2019-02-01 | 2019-03-14 |  | 0d |  |
| 15 | 5.1.2 | Izrada dijagrama klasa |  | 76d | 2019-03-15 | 2019-06-28 | 14 | 0d |  |
| 16 | 5.1.3 | Izrada dijagrama sekvenci |  | 76d | 2019-03-15 | 2019-06-28 | 14 | 0d |  |
| 17 | 5.2 | **Modelovanje i dizajn pametne kante** |  | 106d | 2019-02-01 | 2019-06-28 |  | 0d |  |
| 18 | 5.2.1 | Dizajn spoljašnjosti kante |  | 106d | 2019-02-01 | 2019-06-28 |  | 0d |  |
| 19 | 5.2.2 | Modelovanje arhitekture računara |  | 46d | 2019-02-01 | 2019-04-05 |  | 0d |  |
| 20 | 5.2.3 | Dizajn unutrašnjosti kante |  | 60d | 2019-04-08 | 2019-06-28 | 19 | 0d |  |
| 21 | 6 | Prekretnica - Završeno modelovanje sistema | milestone, manual | 0d | 2019-07-01 | 2019-07-01 | 12 |  |  |
| 22 | 7 | **WP4 - Izrada prototipa pametne kante** |  | 66d | 2019-07-01 | 2019-09-30 | 12 |  |  |
| 23 | 7.1 | Izrada prototipa pametne kante |  | 40d | 2019-07-01 | 2019-08-23 |  | 0d |  |
| 24 | 7.2 | Izrada interfejsa prema softverskoj komponenti |  | 40d | 2019-07-01 | 2019-08-23 |  | 0d |  |
| 25 | 7.3 | Izrada grafičkog korisničkog interfejsa |  | 40d | 2019-07-01 | 2019-08-23 |  | 0d |  |
| 26 | 7.4 | Integracija i validacija prototipa | manual | 26d | 2019-08-26 | 2019-09-30 | 23, 24, 25 |  |  |

| ID | WBS | Task | Type | Duration | Start | Finish | Predecessors | Total slack |
| --- | --- | --- | --- | --- | --- | --- | --- | --- |
| 27 | 8 | **WP5 - Izrada prototipa veb-portala** |  | 45d | 2019-07-01 | 2019-08-30 | 12 |  |
| 28 | 8.1 | Izrada glavnih stranica |  | 35d | 2019-07-01 | 2019-08-16 |  | 0d |
| 29 | 8.2 | Izrada stranica za korisnike |  | 35d | 2019-07-01 | 2019-08-16 |  | 0d |
| 30 | 8.3 | Izrada stranica za administratore |  | 35d | 2019-07-01 | 2019-08-16 |  | 0d |
| 31 | 8.4 | Validacija i integracija prototipa | manual | 10d | 2019-08-19 | 2019-08-30 | 28, 29, 30 |  |
| 32 | 9 | Prekretnica - Izrađeni prototipi | milestone, manual | 0d | 2019-10-01 | 2019-10-01 | 22, 27 |  |
| 33 | 10 | **WP6 - Implementacija pametne kante** |  | 172d | 2019-10-01 | 2020-05-29 | 22 |  |
| 34 | 10.1 | Kreiranje hardverske komponente |  | 90d | 2019-10-01 | 2020-02-05 |  | 0d |
| 35 | 10.2 | Izrada grafičkog korisničkog interfejsa |  | 60d | 2019-10-01 | 2019-12-23 |  | 112d |
| 36 | 10.3 | **Konfiguracija hardverske komponente** |  | 82d | 2020-02-06 | 2020-05-29 | 34 | 0d |
| 37 | 10.3.1 | Dodavanje matične ploče |  | 30d | 2020-02-06 | 2020-03-18 |  | 0d |
| 38 | 10.3.2 | Dodavanje čipova |  | 15d | 2020-03-19 | 2020-04-08 | 37 | 0d |
| 39 | 10.3.3 | Dodavanje LCD displeja |  | 15d | 2020-04-09 | 2020-04-29 | 38 | 0d |
| 40 | 10.3.4 | Dodavanje senzora |  | 15d | 2020-04-30 | 2020-05-20 | 39 | 0d |
| 41 | 10.3.5 | Dodavanje mini modema |  | 7d | 2020-05-21 | 2020-05-29 | 40 | 0d |
| 42 | 11 | **WP7 - Implementacija veb-portala** |  | 193d | 2019-09-02 | 2020-05-29 | 27 |  |
| 43 | 11.1 | **Frontend implementacija** |  | 150d | 2019-09-02 | 2020-03-31 |  | 0d |
| 44 | 11.1.1 | Izrada glavnih stranica |  | 50d | 2019-09-02 | 2019-11-08 |  | 0d |
| 45 | 11.1.2 | Izrada stranica za korisnike |  | 50d | 2019-11-11 | 2020-01-21 | 44 | 0d |
| 46 | 11.1.3 | Izrada stranica za administratore |  | 50d | 2020-01-22 | 2020-03-31 | 45 | 0d |
| 47 | 11.2 | **Backend implementacija** |  | 150d | 2019-09-02 | 2020-03-31 |  | 0d |
| 48 | 11.2.1 | Izrada kontrolera |  | 120d | 2019-09-02 | 2020-02-18 |  | 0d |
| 49 | 11.2.2 | Omogućavanje komunikacije sa bazom |  | 20d | 2019-09-02 | 2019-09-27 |  | 0d |
| 50 | 11.2.3 | Implementacija biznis logike |  | 60d | 2019-09-30 | 2019-12-20 | 49 | 0d |
| 51 | 11.2.4 | Izrada modela |  | 40d | 2019-12-23 | 2020-02-18 | 50 | 0d |
| 52 | 11.2.5 | Povezivanje sa sistemom za naplatu |  | 30d | 2020-02-19 | 2020-03-31 | 48, 51 | 0d |
| 53 | 11.3 | Integracija frontend i backend dela |  | 43d | 2020-04-01 | 2020-05-29 | 43, 47 | 0d |
| 54 | 12 | Prekretnica - Završena implementacija | milestone, manual | 0d | 2020-06-01 | 2020-06-01 | 33, 42 |  |

| ID | WBS | Task | Type | Duration | Start | Finish | Predecessors | Total slack |
| --- | --- | --- | --- | --- | --- | --- | --- | --- |
| 55 | 13 | **WP8 - Testiranje pametne kante** |  | 88d | 2020-06-01 | 2020-09-30 | 33 |  |
| 56 | 13.1 | Izrada testova |  | 30d | 2020-06-01 | 2020-07-10 |  | 0d |
| 57 | 13.2 | Pokretanje testova |  | 58d | 2020-07-13 | 2020-09-30 | 56 | 0d |
| 58 | 14 | **WP9 - Testiranje veb-portala** |  | 88d | 2020-06-01 | 2020-09-30 | 42 |  |
| 59 | 14.1 | Izrada testova |  | 50d | 2020-06-01 | 2020-08-07 |  | 0d |
| 60 | 14.2 | Pokretanje testova |  | 38d | 2020-08-10 | 2020-09-30 | 59 | 0d |
| 61 | 15 | Prekretnica - Završeno testiranje | milestone, manual | 0d | 2020-10-01 | 2020-10-01 | 55, 58 |  |
| 62 | 16 | **WP10 - Integracija hardvera i softvera** |  | 43d | 2020-10-01 | 2020-11-30 | 55, 58 |  |
| 63 | 16.1 | Koordinisanje postupka integracije |  | 43d | 2020-10-01 | 2020-11-30 |  | 0d |
| 64 | 16.2 | Omogućavanje integracije hardvera |  | 10d | 2020-10-01 | 2020-10-14 |  | 0d |
| 65 | 16.3 | Omogućavanje integracije softvera |  | 5d | 2020-10-01 | 2020-10-07 |  | 5d |
| 66 | 16.4 | Integracija |  | 33d | 2020-10-15 | 2020-11-30 | 64, 65 | 0d |
| 67 | 17 | **WP11 - Integraciono testiranje** |  | 108d | 2020-12-01 | 2021-04-30 | 62 |  |
| 68 | 17.1 | Izrada testova |  | 40d | 2020-12-01 | 2021-01-26 |  | 0d |
| 69 | 17.2 | Pokretanje testova |  | 58d | 2021-01-27 | 2021-04-16 | 68 | 0d |
| 70 | 17.3 | Popravljanje problema |  | 10d | 2021-04-19 | 2021-04-30 | 69 | 0d |
| 71 | 18 | Prekretnica - Integrisana hardverska i softverska komponenta | milestone, manual | 0d | 2021-05-03 | 2021-05-03 | 62, 67 |  |
| 72 | 19 | **WP12 - Puštanje sistema u rad** |  | 43d | 2021-05-03 | 2021-06-30 | 67 |  |
| 73 | 19.1 | Postavljanje kanti |  | 43d | 2021-05-03 | 2021-06-30 |  | 0d |
| 74 | 19.2 | Instalacija softvera |  | 43d | 2021-05-03 | 2021-06-30 |  | 0d |
| 75 | 19.3 | Postavljanje veb-portala na Internet |  | 43d | 2021-05-03 | 2021-06-30 |  | 0d |
| 76 | 19.4 | Administracija postupka puštanja sistema u rad |  | 43d | 2021-05-03 | 2021-06-30 |  | 0d |
| 77 | 19.5 | Obuka osoblja i korisnika |  | 43d | 2021-05-03 | 2021-06-30 |  | 0d |
| 78 | 19.6 | Obezbeđivanje mehanizma za podršku |  | 10d | 2021-05-03 | 2021-05-14 |  | 33d |
| 79 | 20 | Prekretnica - Pušten sistem u rad | milestone, manual | 0d | 2021-07-01 | 2021-07-01 | 72 |  |

| ID | WBS | Task | Type | Duration | Start | Finish | Predecessors | Total slack |
| --- | --- | --- | --- | --- | --- | --- | --- | --- |
| 80 | 21 | **WP13 - Evaluacija i disiminacija** |  | 194d | 2020-10-01 | 2021-06-30 | 55, 58 |  |
| 81 | 21.1 | Prikupljanje utisaka |  | 194d | 2020-10-01 | 2021-06-30 |  | 0d |
| 82 | 21.2 | Promovisanje proizvoda |  | 194d | 2020-10-01 | 2021-06-30 |  | 0d |
| 83 | 21.3 | Organizovanje marketinških kampanja |  | 100d | 2020-10-01 | 2021-02-18 |  | 0d |
| 84 | 21.4 | Obezbeđivanje reklamnog materijala |  | 80d | 2020-10-01 | 2021-01-21 |  | 114d |
| 85 | 21.5 | Učestvovanje na sajmovima i konferencijama |  | 94d | 2021-02-19 | 2021-06-30 | 83 | 0d |
| 86 | 22 | Prekretnica - Završena evaluacija i disiminacija | milestone, manual | 0d | 2021-07-01 | 2021-07-01 | 80 |  |
| 87 | 23 | **WP14 - Upravljanje projektom** |  | 779d | 2018-07-02 | 2021-06-30 |  |  |
| 88 | 23.1 | Rukovođenje projektom |  | 779d | 2018-07-02 | 2021-06-30 |  | 0d |
| 89 | 23.2 | Minimalizacija budžeta | manual | 1d? | 2018-07-02 | 2018-07-02 |  |  |
| 90 | 23.3 | Minimalizacija rizika | manual | 1d? | 2018-07-02 | 2018-07-02 |  |  |
| 91 | 23.4 | Minimalizacija iskorišćenja resursa | manual | 1d? | 2018-07-02 | 2018-07-02 |  |  |
| 92 | 23.5 | Upravljanje aktivnostima |  | 779d | 2018-07-02 | 2021-06-30 |  | 0d |
| 93 | 23.6 | Nedeljni sastanak - video konferencija | manual | 1d? | 2018-07-02 | 2018-07-02 |  |  |
| 94 | 23.7 | Dorada MS Project fajla | manual | 1d? | 2018-07-02 | 2018-07-02 |  |  |
| 95 | 23.8 | Upravljanje merama kvailteta i postupcima | manual | 1d? | 2018-07-02 | 2018-07-02 |  |  |
| 96 | 23.9 | Upravljanje načinom komunikacije | manual | 1d? | 2018-07-02 | 2018-07-02 |  |  |
